# BLUEsatProjectPlan

Schedule from MS Project, 2012-01-14 to 2013-02-28, scheduled back from the finish, 24 hours a day.

## Calendars

- 24 Hours: Mon-Sun 00:00-24:00.

## Resources

| Resource |
| --- |
| PCB Team |
| Mechanical Team |
| Radio Team |
| Software Team |
| Payload Team |
| Executive Team |
| Executive |
| Power Team |
| Testing Team |
| 22 |

## Schedule

| ID | WBS | Task | Type | Duration | Start | Finish | Predecessors | Constraint | Resources | Work |
| --- | --- | --- | --- | --- | --- | --- | --- | --- | --- | --- |
| 1 | 1 | **Documentation** |  | 411.38d | 2012-01-14 | 2013-02-28 |  | as late as possible |  |  |
| 2 | 1.1 | <New Task> | manual | 0.33d | 2013-02-28 | 2013-02-28 |  |  |  |  |
| 3 | 2 | **Design, Testing and Analysis** |  | 30w | 2012-01-14 | 2012-08-11 |  | as late as possible |  | 63711h |
| 4 | 2.1 | <New Task> | manual | 1d | 2012-08-10 | 2012-08-11 |  |  |  |  |
| 5 | 2.2 | **Integration Rig (Flatsat)** |  | 41.38d | 2012-01-15 | 2012-02-25 |  | as late as possible |  |  |
| 6 | 2.2.1 | <New Task> | manual | 0.33d | 2012-02-25 | 2012-02-25 |  |  |  |  |
| 7 | 2.3 | **Feasbility Investigation** |  | 7.05w | 2012-02-25 | 2012-04-14 |  | as late as possible | Executive | 3555h |
| 8 | 2.3.1 | Standalone Camera evaluation | manual | 7.05w | 2012-02-25 | 2012-04-14 |  |  | Executive | 1185h |
| 9 | 2.3.2 | Namuru Evaluation | manual | 7.05w | 2012-02-25 | 2012-04-14 |  | as late as possible | Executive | 1185h |
| 10 | 2.4 | **Design Finalisation** |  | 24.05w | 2012-02-25 | 2012-08-11 | 5SS | as late as possible | Mechanical Team; Payload Team; PCB Team; Power Team; Radio Team; Software Team | 49572h |
| 11 | 2.4.1 | Software Application Level Dvelopment | manual | 168.38d | 2012-02-25 | 2012-08-11 |  | as late as possible | Software Team | 4041h |
| 12 | 2.4.2 | LTP development and testing | manual | 168.38d | 2012-02-25 | 2012-08-11 |  | as late as possible | Software Team | 4041h |
| 13 | 2.4.3 | Beaglebone L4 software development | manual | 168.38d | 2012-01-28 | 2012-07-14 |  | as late as possible | Payload Team; Software Team | 8082h |
| 14 | 2.4.4 | Beagle Bone design integration | manual | 8w | 2012-02-25 | 2012-04-21 |  | as late as possible | PCB Team; Payload Team | 2688h |
| 15 | 2.4.5 | Antennae Foothoold, Mounting and Material | manual | 8w | 2012-03-24 | 2012-05-19 |  | as late as possible | Mechanical Team; Radio Team | 2688h |
| 16 | 2.4.6 | Battery Charge design finalisation | manual | 6w | 2012-05-05 | 2012-06-16 |  | as late as possible | Power Team | 1008h |
| 17 | 2.4.7 | Wiring Harness Design | manual | 4.05w | 2012-05-19 | 2012-06-16 |  | as late as possible | Mechanical Team; PCB Team | 1362h |
| 18 | 2.4.8 | Tray 2 PCB Layout and Routing | manual | 4w | 2012-06-16 | 2012-07-14 | 17, 16 |  | PCB Team | 672h |
| 19 | 2.4.9 | Tray 4 PCB Layout and Routing | manual | 4w | 2012-07-14 | 2012-08-11 | 9, 14, 13 | as late as possible | PCB Team | 672h |
| 20 | 2.4.10 | Battery Mount Design | manual | 1d? | 2012-08-10 | 2012-08-11 |  | as late as possible | Power Team | 24h |
| 21 | 2.4.11 | Solar Panel Routing and Mounting | manual | 1d? | 2012-08-10 | 2012-08-11 |  | as late as possible | Power Team; Mechanical Team | 48h |
| 22 | 2.5 | **Testing and Evaluation** |  | 24.05w | 2012-02-25 | 2012-08-11 |  | as late as possible |  | 3024h |
| 23 | 2.5.1 | Regulator and LDO characterisation | manual | 3w | 2012-02-25 | 2012-03-17 |  | as late as possible | Testing Team | 504h |
| 24 | 2.5.2 | Communicaitions power characterisation | manual | 3w | 2012-03-17 | 2012-04-07 |  | as late as possible | Testing Team | 504h |
| 25 | 2.5.3 | Telemetry testing and power characterisation | manual | 3w | 2012-04-07 | 2012-04-28 |  | as late as possible | Testing Team | 504h |
| 26 | 2.5.4 | CSC power characterisation | manual | 3w | 2012-06-16 | 2012-07-07 |  | as late as possible | Testing Team | 504h |
| 27 | 2.5.5 | Battery testing and charecterisation | manual | 3w | 2012-06-30 | 2012-07-21 | 16 |  | Testing Team | 504h |
| 28 | 2.5.6 | Beagle Bone power charecterisation | manual | 3w | 2012-07-21 | 2012-08-11 | 14 | as late as possible | Testing Team | 504h |

| ID | WBS | Task | Type | Duration | Start | Finish | Predecessors | Total slack | Free slack | Constraint | Resources | Work |
| --- | --- | --- | --- | --- | --- | --- | --- | --- | --- | --- | --- | --- |
| 29 | 2.6 | **Simulation** |  | 30.05w | 2012-01-14 | 2012-08-11 |  |  |  | as late as possible |  | 7560h |
| 30 | 2.6.1 | Structural and Thermal model creation | manual | 3w | 2012-01-14 | 2012-02-04 |  |  |  | as late as possible | Mechanical Team | 504h |
| 31 | 2.6.2 | Structural stress research and Investigation | manual | 10w | 2012-02-04 | 2012-04-14 |  |  |  | as late as possible | Mechanical Team | 1680h |
| 32 | 2.6.3 | Thermal Environmental research | manual | 10w | 2012-02-04 | 2012-04-14 |  |  |  | as late as possible | Mechanical Team; Testing Team | 3360h |
| 33 | 2.6.4 | Component thermal research | manual | 3w | 2012-04-14 | 2012-05-05 |  |  |  | as late as possible | Mechanical Team | 504h |
| 34 | 2.6.5 | Final structural simulation | manual | 4w | 2012-05-05 | 2012-06-02 |  |  |  | as late as possible | Mechanical Team | 672h |
| 35 | 2.6.6 | Final thermal simulation | manual | 4w | 2012-06-02 | 2012-06-30 | 30, 32 |  |  | as late as possible | Mechanical Team | 672h |
| 36 | 2.6.7 | Critical Design Review |  | 1w | 2012-08-04 | 2012-08-11 |  | 203.38d | 0d | as late as possible | Executive | 168h |
| 37 | 3 | **Production** |  | 12w | 2012-08-18 | 2012-11-10 | 3 |  |  | as late as possible |  |  |
| 38 | 3.1 | PCB Manufacture | manual | 4w | 2012-08-18 | 2012-09-15 |  |  |  |  |  |  |
| 39 | 4 | **Qualification testing** |  | 15w | 2012-11-15 | 2013-02-28 |  |  |  | as late as possible |  |  |
| 40 | 4.1 | Christmas | manual | 3w | 2012-12-16 | 2013-01-06 |  |  |  |  |  |  |
| 41 | 5 | **Delivery and Launch** |  | 3.77w | 2013-02-02 | 2013-02-28 |  |  |  | as late as possible |  |  |
| 42 | 5.1 | <New Task> | manual | 1d | 2013-02-27 | 2013-02-28 |  |  |  | as late as possible |  |  |
